# gantt_v0.

Schedule from MS Project, 2019-02-11 to 2019-05-29, 7 hours a day, A marks actual dates.
INSA Rennes

## Calendars

- Standard: Mon-Fri 09:00-12:00, 14:00-18:00; Sat-Sun off. Exceptions (off unless hours are given): 2019-02-23 09:00-12:00, 14:00-18:00, 2019-05-04 09:00-12:00, 14:00-18:00.

## Resources

| Resource |
| --- |
| Gageot Dylan |
| Mehat Baptiste |
| Chabanis Nicolas |
| Hily Nicolas |

## Schedule

| ID | WBS | Task | Type | Duration | Start | Finish | Predecessors | Complete | Remaining | Total slack | Free slack | Constraint | Resources | Work | Actual work |
| --- | --- | --- | --- | --- | --- | --- | --- | --- | --- | --- | --- | --- | --- | --- | --- |
| 1 | 1 | Défintion du CDCF | manual | 2.67d | 2019-02-11 | 2019-02-13 |  |  |  |  |  |  | Gageot Dylan; Chabanis Nicolas; Hily Nicolas; Mehat Baptiste | 74.67h |  |
| 2 | 2 | **Constitution des headers pour la CPU** |  | 5d | 2019-02-13 A | 2019-02-20 A | 1 | 100% |  |  |  |  |  | 138.6h | 138.6h |
| 3 | 2.1 | Définition des principes d'emulation |  | 5d | 2019-02-13 A | 2019-02-20 A |  | 100% |  |  |  |  | Mehat Baptiste [33%]; Gageot Dylan [33%]; Chabanis Nicolas [33%]; Hily Nicolas [33%] | 46.2h | 46.2h |
| 4 | 2.2 | Défintion du fonctionnement CPU/PPU |  | 5d | 2019-02-13 A | 2019-02-20 A |  | 100% |  |  |  |  | Mehat Baptiste [33%]; Chabanis Nicolas [33%]; Hily Nicolas [33%]; Gageot Dylan [33%] | 46.2h | 46.2h |
| 5 | 2.3 | Défintion du modèle des cartes mémoires |  | 5d | 2019-02-13 A | 2019-02-20 A |  | 100% |  |  |  |  | Mehat Baptiste [33%]; Gageot Dylan [33%]; Chabanis Nicolas [33%]; Hily Nicolas [33%] | 46.2h | 46.2h |
| 6 | 3 | Début du developpement | milestone, manual | 0d | 2019-02-22 | 2019-02-22 |  |  |  |  |  |  |  |  |  |
| 7 | 4 | **Emulation de la CPU** |  | 26.33d | 2019-02-20 A | 2019-03-27 | 2 | 99% | 0d | 45d |  |  |  | 716.33h | 716.24h |
| 8 | 4.1 | Développement du lecteur mémoire |  | 19.33d | 2019-02-20 A | 2019-03-18 |  | 99% | 0d | 52d |  | finish no earlier than 2019-03-18 | Chabanis Nicolas [50%] | 67.67h | 67.66h |
| 9 | 4.2 | Développement des modes d'adressages |  | 22.33d | 2019-02-20 A | 2019-03-21 |  | 99% | 0d | 49d |  | finish no earlier than 2019-03-21 | Mehat Baptiste [25%]; Hily Nicolas [50%] | 117.25h | 117.23h |
| 10 | 4.3 | Développement des instructions |  | 22.33d | 2019-02-20 A | 2019-03-21 |  | 99% | 0d | 49d |  | finish no earlier than 2019-03-21 | Mehat Baptiste [25%]; Gageot Dylan [50%]; Chabanis Nicolas [50%]; Hily Nicolas [50%] | 273.58h | 273.54h |
| 11 | 4.4 | Développement du mapper NROM |  | 19.33d | 2019-02-20 A | 2019-03-18 |  | 99% | 0d | 52d |  | finish no earlier than 2019-03-18 | Gageot Dylan [50%] | 67.67h | 67.66h |
| 12 | 4.5 | Développement du système d'interruption |  | 22.33d | 2019-02-20 A | 2019-03-21 |  | 99% | 0d | 49d |  | finish no earlier than 2019-03-21 | Mehat Baptiste [50%] | 78.17h | 78.16h |
| 13 | 4.6 | Tester l'ensemble CPU |  | 4d | 2019-03-22 A | 2019-03-27 A | 8 | 100% |  |  |  | start no earlier than 2019-03-22 | Chabanis Nicolas; Gageot Dylan; Hily Nicolas; Mehat Baptiste | 112h | 112h |
| 14 | 5 | Développement de l'interface IOReg |  | 4d | 2019-03-28 A | 2019-04-02 A | 12, 11, 10, 9, 13 | 100% |  |  |  | start no earlier than 2019-03-14 | Gageot Dylan | 28h | 28h |
| 15 | 6 | **Emulation de la PPU** |  | 20d | 2019-04-03 A | 2019-04-30 A | 7, 14 | 100% |  |  |  |  |  | 210h | 210h |
| 16 | 6.1 | Développement de la carte mémoire |  | 1d | 2019-04-03 A | 2019-04-03 A |  | 100% |  |  |  |  | Gageot Dylan [25%] | 1.75h | 1.75h |
| 17 | 6.2 | Mise à jour des registres selon les accès |  | 2d | 2019-04-04 A | 2019-04-05 A | 16 | 100% |  |  |  |  | Gageot Dylan | 14h | 14h |
| 18 | 6.3 | Gestion des temps de cycle et scanline |  | 6d | 2019-04-08 A | 2019-04-15 A | 17 | 100% |  |  |  |  | Gageot Dylan | 42h | 42h |
| 19 | 6.4 | Prise en charge des sprites |  | 5d | 2019-04-16 A | 2019-04-22 A | 18 | 100% |  |  |  |  | Gageot Dylan [25%] | 8.75h | 8.75h |
| 20 | 6.5 | Prise en charge du background |  | 7d | 2019-04-03 A | 2019-04-11 A |  | 100% |  |  |  |  | Mehat Baptiste [50%] | 24.5h | 24.5h |
| 21 | 6.6 | Developpement du rendu graphique |  | 7d | 2019-04-12 A | 2019-04-22 A | 20 | 100% |  |  |  | start no earlier than 2019-03-25 | Mehat Baptiste | 49h | 49h |
| 22 | 6.7 | Tester l'ensemble PPU |  | 5d | 2019-04-24 A | 2019-04-30 A | 19, 21 | 100% |  |  |  |  | Gageot Dylan; Chabanis Nicolas | 70h | 70h |
| 23 | 7 | **Emulation des entrées/sorties** |  | 20d | 2019-04-03 A | 2019-04-30 | 14 | 99% | 0d | 0d |  |  | Hily Nicolas [25%] | 245h | 239.75h |
| 24 | 7.1 | Gestion des touches SDL |  | 10d | 2019-04-03 A | 2019-04-16 A |  | 100% |  |  |  |  | Hily Nicolas; Chabanis Nicolas | 140h | 140h |
| 25 | 7.2 | Developpement du contrôleur |  | 10d | 2019-04-17 A | 2019-04-30 A | 24 | 100% |  |  |  |  | Chabanis Nicolas | 70h | 70h |
| 26 | 8 | Tester l'ensemble CPU/PPU |  | 5d | 2019-05-02 A | 2019-05-07 A | 23, 15 | 100% |  |  |  |  | Gageot Dylan; Mehat Baptiste; Chabanis Nicolas; Hily Nicolas | 140h | 140h |
| 27 | 9 | Rédaction du rapport |  | 11d | 2019-05-08 | 2019-05-22 | 26 |  |  | 4d | 0d |  |  |  |  |
| 28 | 10 | Préparation de la soutenance |  | 11d | 2019-05-08 | 2019-05-22 | 26 |  |  | 4d |  |  |  |  |  |
| 29 | 11 | Rendu du rapport | milestone, manual | 0d | 2019-05-23 | 2019-05-23 | 27 |  |  |  |  |  |  |  |  |
| 30 | 12 | Soutenance | milestone, manual | 0d | 2019-05-27 | 2019-05-27 |  |  |  |  |  |  |  |  |  |
| 31 | 13 | Dernier commit | milestone, manual | 0d | 2019-05-29 | 2019-05-29 |  |  |  |  |  |  |  |  |  |
| 32 | 14 | Sortie de la V0 | milestone | 0d | 2019-05-07 | 2019-05-07 | 26 |  |  | 15d |  |  |  |  |  |

Notes:
- 8: Remettre à jour pour integrer l'obtention de pointeur par la méthode Map<Mapper>_Get
- 9: Manque les tests unitaires
